# APC Developement Schedule V0.8 20170519

Schedule from MS Project, 2017-03-27 to 2018-01-22.

## Calendars

- 표준: Mon-Fri 08:00-12:00, 13:00-17:00; Sat-Sun off.

## Schedule

| ID | WBS | Task | Type | Duration | Start | Finish | Total slack |
| --- | --- | --- | --- | --- | --- | --- | --- |
| 1 | 1 | **APC** |  | 216d | 2017-03-27 | 2018-01-22 | 0d |
| 2 | 1.1 | **PCS** |  | 142d | 2017-03-27 | 2017-10-10 | 0d |
| 3 | 1.1.1 | **Analysis** |  | 7d | 2017-05-04 | 2017-05-12 |  |
| 4 | 1.1.1.1 | Functional requrement analysis | manual | 7d | 2017-03-27 | 2017-04-04 |  |
| 5 | 1.1.1.2 | Function definitions & specifications | manual | 3d | 2017-04-06 | 2017-04-10 |  |
| 6 | 1.1.2 | **Design** |  | 31d | 2017-04-11 | 2017-05-23 | 0d |
| 7 | 1.1.2.1 | Screen design | manual | 14d | 2017-04-11 | 2017-04-28 |  |
| 8 | 1.1.2.2 | Functional design | manual | 7d | 2017-05-01 | 2017-05-09 |  |
| 9 | 1.1.2.3 | Interface design | manual | 10d | 2017-05-10 | 2017-05-23 |  |
| 10 | 1.1.3 | **Implementation** |  | 102d | 2017-05-08 | 2017-09-26 | 0d |
| 11 | 1.1.3.1 | Main screen | manual | 7d | 2017-05-08 | 2017-05-16 |  |
| 12 | 1.1.3.2 | Input settings | manual | 3d | 2017-05-17 | 2017-05-19 |  |
| 13 | 1.1.3.3 | Device settings(Media) | manual | 7d | 2017-05-22 | 2017-05-30 |  |
| 14 | 1.1.3.4 | Device settings(CG) | manual | 12d | 2017-05-31 | 2017-06-15 |  |
| 15 | 1.1.3.5 | Preview screen by device | manual | 3d | 2017-06-16 | 2017-06-20 |  |
| 16 | 1.1.3.6 | Transition settings | manual | 7d | 2017-06-21 | 2017-06-29 |  |
| 17 | 1.1.3.7 | Audio Mixer settings | manual | 7d | 2017-06-30 | 2017-07-10 |  |
| 18 | 1.1.3.8 | PGM screen | manual | 3d | 2017-07-11 | 2017-07-13 |  |
| 19 | 1.1.3.9 | PST screen | manual | 3d | 2017-07-14 | 2017-07-18 |  |
| 20 | 1.1.3.10 | **Control Panel** |  | 36d | 2017-07-19 | 2017-09-06 | 0d |
| 21 | 1.1.3.10.1 | Video/Audio Mixer development | manual | 14d | 2017-07-19 | 2017-08-07 |  |
| 22 | 1.1.3.10.2 | Auto transition | manual | 7d | 2017-08-08 | 2017-08-16 |  |
| 23 | 1.1.3.10.3 | Cut transition | manual | 4d | 2017-08-17 | 2017-08-22 |  |
| 24 | 1.1.3.10.4 | CG transition | manual | 7d | 2017-08-23 | 2017-08-31 |  |
| 25 | 1.1.3.10.5 | CG ON/OFF | manual | 4d | 2017-09-01 | 2017-09-06 |  |

| ID | WBS | Task | Type | Duration | Start | Finish | Total slack |
| --- | --- | --- | --- | --- | --- | --- | --- |
| 26 | 1.1.3.11 | **Record** |  | 7d | 2017-09-07 | 2017-09-15 | 0d |
| 27 | 1.1.3.11.1 | Record settings | manual | 2d | 2017-09-07 | 2017-09-08 |  |
| 28 | 1.1.3.11.2 | Record function development | manual | 5d | 2017-09-11 | 2017-09-15 |  |
| 29 | 1.1.3.12 | Control communication module | manual | 7d | 2017-09-18 | 2017-09-26 |  |
| 30 | 1.1.4 | **Test & modify** |  | 10d | 2017-09-27 | 2017-10-10 | 0d |
| 31 | 1.1.4.1 | Functional test & modify | manual | 10d | 2017-09-27 | 2017-10-10 |  |
| 32 | 1.2 | **DCS** |  | 177d | 2017-04-21 | 2017-12-25 | 0d |
| 33 | 1.2.1 | **Analysis** |  | 7d | 2017-05-04 | 2017-05-12 |  |
| 34 | 1.2.1.1 | Functional requrement analysis | manual | 7d | 2017-04-24 | 2017-05-02 |  |
| 35 | 1.2.1.2 | Function definitions & specifications | manual | 3d | 2017-05-10 | 2017-05-12 |  |
| 36 | 1.2.2 | **Design** |  | 27d | 2017-04-21 | 2017-05-29 | 0d |
| 37 | 1.2.2.1 | Screen design | manual | 10d | 2017-04-21 | 2017-05-04 |  |
| 38 | 1.2.2.2 | Functional design | manual | 5d | 2017-05-05 | 2017-05-11 |  |
| 39 | 1.2.2.3 | Interface design | manual | 12d | 2017-05-12 | 2017-05-29 |  |
| 40 | 1.2.3 | **Implementation** |  | 138d | 2017-06-01 | 2017-12-11 | 0d |
| 41 | 1.2.3.1 | **Event** |  | 9d | 2017-06-01 | 2017-06-13 | 0d |
| 42 | 1.2.3.1.1 | Receive events by channel | manual | 2d | 2017-06-01 | 2017-06-02 |  |
| 43 | 1.2.3.1.2 | Event's queue by channel | manual | 1d | 2017-06-05 | 2017-06-05 |  |
| 44 | 1.2.3.1.3 | Event control by channel | manual | 5d | 2017-06-07 | 2017-06-13 |  |
| 45 | 1.2.3.2 | **Device control** |  | 13d | 2017-06-14 | 2017-06-30 | 0d |
| 46 | 1.2.3.2.1 | Control device information management | manual | 4d | 2017-06-14 | 2017-06-19 |  |
| 47 | 1.2.3.2.2 | Control device status | manual | 2d | 2017-06-20 | 2017-06-21 |  |
| 48 | 1.2.3.2.3 | Device control | manual | 5d | 2017-06-21 | 2017-06-27 |  |
| 49 | 1.2.3.2.4 | Control device log | manual | 3d | 2017-06-28 | 2017-06-30 |  |

| ID | WBS | Task | Type | Duration | Start | Finish | Total slack | Constraint |
| --- | --- | --- | --- | --- | --- | --- | --- | --- |
| 50 | 1.2.3.3 | **System synchronization** |  | 16d | 2017-11-20 | 2017-12-11 | 0d |  |
| 51 | 1.2.3.3.1 | Status main & backup | manual | 3d | 2017-11-20 | 2017-11-22 |  |  |
| 52 | 1.2.3.3.2 | Checking other system between main backup | manual | 3d | 2017-11-23 | 2017-11-27 |  |  |
| 53 | 1.2.3.3.3 | Automatic switching between main backup | manual | 10d | 2017-11-28 | 2017-12-11 |  |  |
| 54 | 1.2.4 | **Test & modify** |  | 10d | 2017-12-12 | 2017-12-25 | 0d |  |
| 55 | 1.2.4.1 | Functional test & modify | manual | 10d | 2017-12-12 | 2017-12-25 |  |  |
| 56 | 1.3 | **SEC** |  | 144d | 2017-05-01 | 2017-11-16 | 0d |  |
| 57 | 1.3.1 | **Analysis** |  | 7d | 2017-05-04 | 2017-05-12 |  |  |
| 58 | 1.3.1.1 | Functional requrement analysis | manual | 7d | 2017-05-01 | 2017-05-09 |  |  |
| 59 | 1.3.1.2 | Function definitions & specifications | manual | 3d | 2017-05-10 | 2017-05-12 |  |  |
| 60 | 1.3.2 | **Design** |  | 23d | 2017-05-15 | 2017-06-14 | 0d |  |
| 61 | 1.3.2.1 | Screen design | manual | 14d | 2017-05-15 | 2017-06-01 |  |  |
| 62 | 1.3.2.2 | Functional design | manual | 7d | 2017-05-23 | 2017-05-31 |  |  |
| 63 | 1.3.2.3 | Interface design | manual | 10d | 2017-06-01 | 2017-06-14 |  |  |
| 64 | 1.3.3 | **Implementation** |  | 99d | 2017-07-03 | 2017-11-16 | 0d |  |
| 65 | 1.3.3.1 | **Device control** |  | 8d | 2017-07-03 | 2017-07-12 | 0d |  |
| 66 | 1.3.3.1.1 | DCS inforamtion management | manual | 2d | 2017-07-03 | 2017-07-04 |  |  |
| 67 | 1.3.3.1.2 | Control device through DCS | manual | 5d | 2017-07-06 | 2017-07-12 |  |  |
| 68 | 1.3.3.2 | **Event schedule** |  | 82d | 2017-07-10 | 2017-10-31 | 0d |  |
| 69 | 1.3.3.2.1 | Event schedule layout | manual | 5d | 2017-07-10 | 2017-07-14 |  |  |
| 70 | 1.3.3.2.2 | New event schedule | manual | 0.5d | 2017-07-18 | 2017-07-18 |  |  |
| 71 | 1.3.3.2.3 | Open event schedule | manual | 1d | 2017-07-18 | 2017-07-18 |  |  |
| 72 | 1.3.3.2.4 | Downlaod event schedule | manual | 1d | 2017-07-19 | 2017-07-19 |  |  |
| 73 | 1.3.3.2.5 | Watch folder | manual | 1d | 2017-07-20 | 2017-07-20 |  |  |
| 74 | 1.3.3.2.6 | Delete event schedule |  | 1d | 2017-07-21 | 2017-07-21 | 131d | start no earlier than 2017-07-21 |
| 75 | 1.3.3.2.7 | Save event schedule | manual | 2d | 2017-07-24 | 2017-07-25 |  |  |
| 76 | 1.3.3.2.8 | Save as event schedule | manual | 1d | 2017-07-26 | 2017-07-26 |  |  |
| 77 | 1.3.3.2.9 | Close event schedule | manual | 1d | 2017-07-26 | 2017-07-26 |  |  |
| 78 | 1.3.3.2.10 | Print settings |  | 1d | 2017-10-26 | 2017-10-26 | 62d | start no earlier than 2017-10-26 |
| 79 | 1.3.3.2.11 | Print | manual | 3d | 2017-10-27 | 2017-10-31 |  |  |

| ID | WBS | Task | Type | Duration | Start | Finish | Total slack |
| --- | --- | --- | --- | --- | --- | --- | --- |
| 80 | 1.3.3.3 | **Event editing** |  | 11d | 2017-07-27 | 2017-08-10 | 0d |
| 81 | 1.3.3.3.1 | Insert event | manual | 4d | 2017-07-27 | 2017-08-01 |  |
| 82 | 1.3.3.3.2 | Modify event | manual | 2d | 2017-08-02 | 2017-08-03 |  |
| 83 | 1.3.3.3.3 | Delete events | manual | 2d | 2017-08-04 | 2017-08-07 |  |
| 84 | 1.3.3.3.4 | Checking events | manual | 3d | 2017-08-08 | 2017-08-10 |  |
| 85 | 1.3.3.4 | **Event schedule editing** |  | 8d | 2017-08-11 | 2017-08-22 | 0d |
| 86 | 1.3.3.4.1 | Cut | manual | 2d | 2017-08-11 | 2017-08-14 |  |
| 87 | 1.3.3.4.2 | Copy | manual | 2d | 2017-08-14 | 2017-08-15 |  |
| 88 | 1.3.3.4.3 | Paste | manual | 3d | 2017-08-16 | 2017-08-18 |  |
| 89 | 1.3.3.4.4 | Find | manual | 2d | 2017-08-18 | 2017-08-21 |  |
| 90 | 1.3.3.4.5 | Find & change | manual | 2d | 2017-08-21 | 2017-08-22 |  |
| 91 | 1.3.3.5 | **Operation** |  | 17d | 2017-08-23 | 2017-09-14 | 0d |
| 92 | 1.3.3.5.1 | Start | manual | 5d | 2017-08-23 | 2017-08-29 |  |
| 93 | 1.3.3.5.2 | End | manual | 2d | 2017-08-30 | 2017-08-31 |  |
| 94 | 1.3.3.5.3 | Stop | manual | 1d | 2017-09-01 | 2017-09-01 |  |
| 95 | 1.3.3.5.4 | Setting next event | manual | 3d | 2017-09-05 | 2017-09-07 |  |
| 96 | 1.3.3.5.5 | Start next event | manual | 2d | 2017-09-08 | 2017-09-11 |  |
| 97 | 1.3.3.5.6 | Increase one second event duration | manual | 1d | 2017-09-12 | 2017-09-12 |  |
| 98 | 1.3.3.5.7 | Decrease one second event duration | manual | 1d | 2017-09-12 | 2017-09-12 |  |
| 99 | 1.3.3.5.8 | Specify destination event | manual | 2d | 2017-09-13 | 2017-09-14 |  |
| 100 | 1.3.3.6 | **Current video information** |  | 0.2d | 2017-09-15 | 2017-09-15 | 0d |
| 101 | 1.3.3.6.1 | Current time | manual | 0.2d | 2017-09-15 | 2017-09-15 |  |
| 102 | 1.3.3.6.2 | Current video name | manual | 0.2d | 2017-09-15 | 2017-09-15 |  |
| 103 | 1.3.3.6.3 | Current video duration | manual | 0.2d | 2017-09-15 | 2017-09-15 |  |
| 104 | 1.3.3.6.4 | Current video timecode | manual | 0.2d | 2017-09-15 | 2017-09-15 |  |
| 105 | 1.3.3.6.5 | Current video remain timecode | manual | 0.2d | 2017-09-15 | 2017-09-15 |  |

| ID | WBS | Task | Type | Duration | Start | Finish | Total slack |
| --- | --- | --- | --- | --- | --- | --- | --- |
| 106 | 1.3.3.7 | **Next video information** |  | 0.2d | 2017-09-18 | 2017-09-18 | 0d |
| 107 | 1.3.3.7.1 | Next video start time | manual | 0.2d | 2017-09-18 | 2017-09-18 |  |
| 108 | 1.3.3.7.2 | Next video name | manual | 0.2d | 2017-09-18 | 2017-09-18 |  |
| 109 | 1.3.3.7.3 | Next video duration | manual | 0.2d | 2017-09-18 | 2017-09-18 |  |
| 110 | 1.3.3.8 | **Video file management** |  | 4d | 2017-09-19 | 2017-09-22 | 0d |
| 111 | 1.3.3.8.1 | Watch folder | manual | 1d | 2017-09-19 | 2017-09-19 |  |
| 112 | 1.3.3.8.2 | Video file list | manual | 1d | 2017-09-20 | 2017-09-20 |  |
| 113 | 1.3.3.8.3 | Video preview | manual | 3d | 2017-09-20 | 2017-09-22 |  |
| 114 | 1.3.3.9 | **CG management** |  | 8d | 2017-09-25 | 2017-10-04 | 0d |
| 115 | 1.3.3.9.1 | Watch folder | manual | 1d | 2017-09-25 | 2017-09-25 |  |
| 116 | 1.3.3.9.2 | CG list | manual | 1d | 2017-09-26 | 2017-09-26 |  |
| 117 | 1.3.3.9.3 | CG preview | manual | 7d | 2017-09-26 | 2017-10-04 |  |
| 118 | 1.3.3.10 | **Video preview** |  | 3d | 2017-10-05 | 2017-10-09 | 0d |
| 119 | 1.3.3.10.1 | Current video preview | manual | 1d | 2017-10-05 | 2017-10-05 |  |
| 120 | 1.3.3.10.2 | Next video preveiw | manual | 1d | 2017-10-06 | 2017-10-06 |  |
| 121 | 1.3.3.10.3 | Input video preview | manual | 1d | 2017-10-09 | 2017-10-09 |  |
| 122 | 1.3.3.11 | Timeline monitoring | manual | 10d | 2017-10-10 | 2017-10-23 |  |
| 123 | 1.3.3.12 | **Channel** |  | 2d | 2017-10-24 | 2017-10-25 | 0d |
| 124 | 1.3.3.12.1 | Channel management | manual | 1d | 2017-10-24 | 2017-10-24 |  |
| 125 | 1.3.3.12.2 | Checking onair channel | manual | 1d | 2017-10-25 | 2017-10-25 |  |
| 126 | 1.3.3.13 | **Settings** |  | 2d | 2017-11-01 | 2017-11-02 | 0d |
| 127 | 1.3.3.13.1 | Setting display event column | manual | 1d | 2017-11-01 | 2017-11-01 |  |
| 128 | 1.3.3.13.2 | Change display font | manual | 1d | 2017-11-02 | 2017-11-02 |  |
| 129 | 1.3.3.14 | **Test & modify** |  | 10d | 2017-11-03 | 2017-11-16 | 0d |
| 130 | 1.3.3.14.1 | Functional test & modify | manual | 10d | 2017-11-03 | 2017-11-16 |  |

| ID | WBS | Task | Type | Duration | Start | Finish | Total slack |
| --- | --- | --- | --- | --- | --- | --- | --- |
| 131 | 1.4 | **Integration Test** |  | 20d | 2017-12-26 | 2018-01-22 | 0d |
| 132 | 1.4.1 | Interface test & modify between SEC & DCS | manual | 10d | 2017-12-26 | 2018-01-08 |  |
| 133 | 1.4.2 | Interface test & modify between DCS & PCS | manual | 10d | 2017-12-26 | 2018-01-08 |  |
| 134 | 1.4.3 | Onair test & modify | manual | 10d | 2018-01-09 | 2018-01-22 |  |
