# APC 개발 일정 20170504

Schedule from MS Project, 2017-03-27 to 2018-01-22.

## Calendars

- 표준: Mon-Fri 08:00-12:00, 13:00-17:00; Sat-Sun off.

## Schedule

| ID | WBS | Task | Type | Duration | Start | Finish | Total slack |
| --- | --- | --- | --- | --- | --- | --- | --- |
| 1 | 1 | **APC** |  | 216d | 2017-03-27 | 2018-01-22 | 0d |
| 2 | 1.1 | **PCS** |  | 142d | 2017-03-27 | 2017-10-10 | 0d |
| 3 | 1.1.1 | **분석** |  | 7d | 2017-05-04 | 2017-05-12 |  |
| 4 | 1.1.1.1 | 기능 요구사항 분석 | manual | 7d | 2017-03-27 | 2017-04-04 |  |
| 5 | 1.1.1.2 | 기능 정의 및 명세 | manual | 3d | 2017-04-06 | 2017-04-10 |  |
| 6 | 1.1.2 | **설계** |  | 31d | 2017-04-11 | 2017-05-23 | 0d |
| 7 | 1.1.2.1 | 화면 설계 | manual | 14d | 2017-04-11 | 2017-04-28 |  |
| 8 | 1.1.2.2 | 기능 설계 | manual | 7d | 2017-05-01 | 2017-05-09 |  |
| 9 | 1.1.2.3 | 인터페이스 설계 | manual | 10d | 2017-05-10 | 2017-05-23 |  |
| 10 | 1.1.3 | **구현** |  | 102d | 2017-05-08 | 2017-09-26 | 0d |
| 11 | 1.1.3.1 | 메인 화면 | manual | 7d | 2017-05-08 | 2017-05-16 |  |
| 12 | 1.1.3.2 | Input 설정 | manual | 3d | 2017-05-17 | 2017-05-19 |  |
| 13 | 1.1.3.3 | Device 설정(Media) | manual | 7d | 2017-05-22 | 2017-05-30 |  |
| 14 | 1.1.3.4 | Device 설정(CG) | manual | 12d | 2017-05-31 | 2017-06-15 |  |
| 15 | 1.1.3.5 | Device 별 Preview 화면 | manual | 3d | 2017-06-16 | 2017-06-20 |  |
| 16 | 1.1.3.6 | Transition 설정 | manual | 7d | 2017-06-21 | 2017-06-29 |  |
| 17 | 1.1.3.7 | Audio Mixer 설정 | manual | 7d | 2017-06-30 | 2017-07-10 |  |
| 18 | 1.1.3.8 | PGM 화면 | manual | 3d | 2017-07-11 | 2017-07-13 |  |
| 19 | 1.1.3.9 | PST 화면 | manual | 3d | 2017-07-14 | 2017-07-18 |  |
| 20 | 1.1.3.10 | **Control Panel** |  | 36d | 2017-07-19 | 2017-09-06 | 0d |
| 21 | 1.1.3.10.1 | Video/Audio Mixer 구현 | manual | 14d | 2017-07-19 | 2017-08-07 |  |
| 22 | 1.1.3.10.2 | 자동 트랜지션 | manual | 7d | 2017-08-08 | 2017-08-16 |  |
| 23 | 1.1.3.10.3 | 컷 트랜지션 | manual | 4d | 2017-08-17 | 2017-08-22 |  |
| 24 | 1.1.3.10.4 | CG 트랜지션 | manual | 7d | 2017-08-23 | 2017-08-31 |  |
| 25 | 1.1.3.10.5 | CG ON/OFF | manual | 4d | 2017-09-01 | 2017-09-06 |  |

| ID | WBS | Task | Type | Duration | Start | Finish | Total slack |
| --- | --- | --- | --- | --- | --- | --- | --- |
| 26 | 1.1.3.11 | **Record** |  | 7d | 2017-09-07 | 2017-09-15 | 0d |
| 27 | 1.1.3.11.1 | Record 설정 | manual | 2d | 2017-09-07 | 2017-09-08 |  |
| 28 | 1.1.3.11.2 | Record 기능 구현 | manual | 5d | 2017-09-11 | 2017-09-15 |  |
| 29 | 1.1.3.12 | 제어 통신 모듈 구현 | manual | 7d | 2017-09-18 | 2017-09-26 |  |
| 30 | 1.1.4 | **테스트** |  | 10d | 2017-09-27 | 2017-10-10 | 0d |
| 31 | 1.1.4.1 | 단위 기능 테스트 및 보완 | manual | 10d | 2017-09-27 | 2017-10-10 |  |
| 32 | 1.2 | **DCS** |  | 177d | 2017-04-21 | 2017-12-25 | 0d |
| 33 | 1.2.1 | **분석** |  | 7d | 2017-05-04 | 2017-05-12 |  |
| 34 | 1.2.1.1 | 기능 요구사항 분석 | manual | 7d | 2017-04-24 | 2017-05-02 |  |
| 35 | 1.2.1.2 | 기능 정의 및 명세 | manual | 3d | 2017-05-10 | 2017-05-12 |  |
| 36 | 1.2.2 | **설계** |  | 27d | 2017-04-21 | 2017-05-29 | 0d |
| 37 | 1.2.2.1 | 화면 설계 | manual | 10d | 2017-04-21 | 2017-05-04 |  |
| 38 | 1.2.2.2 | 기능 설계 | manual | 5d | 2017-05-05 | 2017-05-11 |  |
| 39 | 1.2.2.3 | 인터페이스 설계 | manual | 12d | 2017-05-12 | 2017-05-29 |  |
| 40 | 1.2.3 | **구현** |  | 138d | 2017-06-01 | 2017-12-11 | 0d |
| 41 | 1.2.3.1 | **이벤트** |  | 9d | 2017-06-01 | 2017-06-13 | 0d |
| 42 | 1.2.3.1.1 | 채널 별 이벤트 수신 | manual | 2d | 2017-06-01 | 2017-06-02 |  |
| 43 | 1.2.3.1.2 | 채널 별 이벤트 큐 | manual | 1d | 2017-06-05 | 2017-06-05 |  |
| 44 | 1.2.3.1.3 | 채널 별 이벤트 제어 | manual | 5d | 2017-06-07 | 2017-06-13 |  |
| 45 | 1.2.3.2 | **장비 제어** |  | 13d | 2017-06-14 | 2017-06-30 | 0d |
| 46 | 1.2.3.2.1 | 제어 장비 관리 | manual | 4d | 2017-06-14 | 2017-06-19 |  |
| 47 | 1.2.3.2.2 | 제어 장비 상태 | manual | 2d | 2017-06-20 | 2017-06-21 |  |
| 48 | 1.2.3.2.3 | 장비 제어 | manual | 5d | 2017-06-21 | 2017-06-27 |  |
| 49 | 1.2.3.2.4 | 장비 제어 로그 | manual | 3d | 2017-06-28 | 2017-06-30 |  |

| ID | WBS | Task | Type | Duration | Start | Finish | Total slack | Constraint |
| --- | --- | --- | --- | --- | --- | --- | --- | --- |
| 50 | 1.2.3.3 | **시스템 동기화** |  | 16d | 2017-11-20 | 2017-12-11 | 0d |  |
| 51 | 1.2.3.3.1 | M/B 상태 | manual | 3d | 2017-11-20 | 2017-11-22 |  |  |
| 52 | 1.2.3.3.2 | M/B 간 크로스 상태 검사 | manual | 3d | 2017-11-23 | 2017-11-27 |  |  |
| 53 | 1.2.3.3.3 | M/B 자동 절체 | manual | 10d | 2017-11-28 | 2017-12-11 |  |  |
| 54 | 1.2.4 | **테스트** |  | 10d | 2017-12-12 | 2017-12-25 | 0d |  |
| 55 | 1.2.4.1 | 단위 기능 테스트 및 보완 | manual | 10d | 2017-12-12 | 2017-12-25 |  |  |
| 56 | 1.3 | **SEC** |  | 144d | 2017-05-01 | 2017-11-16 | 0d |  |
| 57 | 1.3.1 | **분석** |  | 7d | 2017-05-04 | 2017-05-12 |  |  |
| 58 | 1.3.1.1 | 기능 요구사항 분석 | manual | 7d | 2017-05-01 | 2017-05-09 |  |  |
| 59 | 1.3.1.2 | 기능 정의 및 명세 | manual | 3d | 2017-05-10 | 2017-05-12 |  |  |
| 60 | 1.3.2 | **설계** |  | 23d | 2017-05-15 | 2017-06-14 | 0d |  |
| 61 | 1.3.2.1 | 화면 설계 | manual | 14d | 2017-05-15 | 2017-06-01 |  |  |
| 62 | 1.3.2.2 | 기능 설계 | manual | 7d | 2017-05-23 | 2017-05-31 |  |  |
| 63 | 1.3.2.3 | 인터페이스 설계 | manual | 10d | 2017-06-01 | 2017-06-14 |  |  |
| 64 | 1.3.3 | **구현** |  | 99d | 2017-07-03 | 2017-11-16 | 0d |  |
| 65 | 1.3.3.1 | **장비 제어** |  | 8d | 2017-07-03 | 2017-07-12 | 0d |  |
| 66 | 1.3.3.1.1 | DCS 관리 | manual | 2d | 2017-07-03 | 2017-07-04 |  |  |
| 67 | 1.3.3.1.2 | DCS를 통한 장비 제어 | manual | 5d | 2017-07-06 | 2017-07-12 |  |  |
| 68 | 1.3.3.2 | **운행표** |  | 82d | 2017-07-10 | 2017-10-31 | 0d |  |
| 69 | 1.3.3.2.1 | 운행표 Layout | manual | 5d | 2017-07-10 | 2017-07-14 |  |  |
| 70 | 1.3.3.2.2 | 새 운행표 | manual | 0.5d | 2017-07-18 | 2017-07-18 |  |  |
| 71 | 1.3.3.2.3 | 운행표 열기 | manual | 1d | 2017-07-18 | 2017-07-18 |  |  |
| 72 | 1.3.3.2.4 | 운행표 다운로드 | manual | 1d | 2017-07-19 | 2017-07-19 |  |  |
| 73 | 1.3.3.2.5 | 운행표 Watch | manual | 1d | 2017-07-20 | 2017-07-20 |  |  |
| 74 | 1.3.3.2.6 | 종료한 운행표 삭제 |  | 1d | 2017-07-21 | 2017-07-21 | 131d | start no earlier than 2017-07-21 |
| 75 | 1.3.3.2.7 | 운행표 저장 | manual | 2d | 2017-07-24 | 2017-07-25 |  |  |
| 76 | 1.3.3.2.8 | 운행표 다른 이름으로 저장 | manual | 1d | 2017-07-26 | 2017-07-26 |  |  |
| 77 | 1.3.3.2.9 | 운행표 닫기 | manual | 1d | 2017-07-26 | 2017-07-26 |  |  |
| 78 | 1.3.3.2.10 | 운행표 인쇄 설정 |  | 1d | 2017-10-26 | 2017-10-26 | 62d | start no earlier than 2017-10-26 |
| 79 | 1.3.3.2.11 | 운행표 인쇄 | manual | 3d | 2017-10-27 | 2017-10-31 |  |  |

| ID | WBS | Task | Type | Duration | Start | Finish | Total slack |
| --- | --- | --- | --- | --- | --- | --- | --- |
| 80 | 1.3.3.3 | **이벤트 편집** |  | 11d | 2017-07-27 | 2017-08-10 | 0d |
| 81 | 1.3.3.3.1 | 이벤트 삽입 | manual | 4d | 2017-07-27 | 2017-08-01 |  |
| 82 | 1.3.3.3.2 | 이벤트 수정 | manual | 2d | 2017-08-02 | 2017-08-03 |  |
| 83 | 1.3.3.3.3 | 이벤트 삭제 | manual | 2d | 2017-08-04 | 2017-08-07 |  |
| 84 | 1.3.3.3.4 | 이벤트 검사 | manual | 3d | 2017-08-08 | 2017-08-10 |  |
| 85 | 1.3.3.4 | **운행표 편집** |  | 25d | 2017-08-11 | 2017-09-14 | 0d |
| 86 | 1.3.3.4.1 | 잘라내기 | manual | 2d | 2017-08-11 | 2017-08-14 |  |
| 87 | 1.3.3.4.2 | 복사하기 | manual | 2d | 2017-08-14 | 2017-08-15 |  |
| 88 | 1.3.3.4.3 | 붙여넣기 | manual | 3d | 2017-08-16 | 2017-08-18 |  |
| 89 | 1.3.3.4.4 | 찾기 | manual | 2d | 2017-08-18 | 2017-08-21 |  |
| 90 | 1.3.3.4.5 | 바꾸기 | manual | 2d | 2017-08-21 | 2017-08-22 |  |
| 91 | 1.3.3.4.6 | **운행** |  | 17d | 2017-08-23 | 2017-09-14 | 0d |
| 92 | 1.3.3.4.6.1 | 운행 시작 | manual | 5d | 2017-08-23 | 2017-08-29 |  |
| 93 | 1.3.3.4.6.2 | 운행 종료 | manual | 2d | 2017-08-30 | 2017-08-31 |  |
| 94 | 1.3.3.4.6.3 | 운행 멈춤 | manual | 1d | 2017-09-01 | 2017-09-01 |  |
| 95 | 1.3.3.4.6.4 | 다음 이벤트 설정 | manual | 3d | 2017-09-05 | 2017-09-07 |  |
| 96 | 1.3.3.4.6.5 | 다음 이벤트 즉시 시작 | manual | 2d | 2017-09-08 | 2017-09-11 |  |
| 97 | 1.3.3.4.6.6 | 이벤트 1초 늘임 | manual | 1d | 2017-09-12 | 2017-09-12 |  |
| 98 | 1.3.3.4.6.7 | 이벤트 1초 줄임 | manual | 1d | 2017-09-12 | 2017-09-12 |  |
| 99 | 1.3.3.4.6.8 | 목적 이벤트 지정 | manual | 2d | 2017-09-13 | 2017-09-14 |  |
| 100 | 1.3.3.5 | **현재 송출영상 정보** |  | 0.2d | 2017-09-15 | 2017-09-15 | 0d |
| 101 | 1.3.3.5.1 | 현재시각 | manual | 0.2d | 2017-09-15 | 2017-09-15 |  |
| 102 | 1.3.3.5.2 | 현재 송출영상 이름 | manual | 0.2d | 2017-09-15 | 2017-09-15 |  |
| 103 | 1.3.3.5.3 | 현재 송출영상 길이 | manual | 0.2d | 2017-09-15 | 2017-09-15 |  |
| 104 | 1.3.3.5.4 | 현재 송출영상 현재 타임코드 | manual | 0.2d | 2017-09-15 | 2017-09-15 |  |
| 105 | 1.3.3.5.5 | 현재 송출영상 남은 타임코드 | manual | 0.2d | 2017-09-15 | 2017-09-15 |  |

| ID | WBS | Task | Type | Duration | Start | Finish | Total slack |
| --- | --- | --- | --- | --- | --- | --- | --- |
| 106 | 1.3.3.6 | **다음 송출영상 정보** |  | 0.2d | 2017-09-18 | 2017-09-18 | 0d |
| 107 | 1.3.3.6.1 | 다음 송출영상 시작 시각 | manual | 0.2d | 2017-09-18 | 2017-09-18 |  |
| 108 | 1.3.3.6.2 | 다음 송출영상 이름 | manual | 0.2d | 2017-09-18 | 2017-09-18 |  |
| 109 | 1.3.3.6.3 | 다음 송출영상 길이 | manual | 0.2d | 2017-09-18 | 2017-09-18 |  |
| 110 | 1.3.3.7 | **영상파일 관리** |  | 4d | 2017-09-19 | 2017-09-22 | 0d |
| 111 | 1.3.3.7.1 | Watch 폴더 | manual | 1d | 2017-09-19 | 2017-09-19 |  |
| 112 | 1.3.3.7.2 | 영상목록 | manual | 1d | 2017-09-20 | 2017-09-20 |  |
| 113 | 1.3.3.7.3 | 영상파일 Preview | manual | 3d | 2017-09-20 | 2017-09-22 |  |
| 114 | 1.3.3.8 | **CG 관리** |  | 8d | 2017-09-25 | 2017-10-04 | 0d |
| 115 | 1.3.3.8.1 | Watch 폴더 | manual | 1d | 2017-09-25 | 2017-09-25 |  |
| 116 | 1.3.3.8.2 | CG 목록 | manual | 1d | 2017-09-26 | 2017-09-26 |  |
| 117 | 1.3.3.8.3 | CG Preview | manual | 7d | 2017-09-26 | 2017-10-04 |  |
| 118 | 1.3.3.9 | **영상 Preview** |  | 3d | 2017-10-05 | 2017-10-09 | 0d |
| 119 | 1.3.3.9.1 | 현재 송출영상 Preview | manual | 1d | 2017-10-05 | 2017-10-05 |  |
| 120 | 1.3.3.9.2 | 다음 송출영상 Preview | manual | 1d | 2017-10-06 | 2017-10-06 |  |
| 121 | 1.3.3.9.3 | 입력 영상 Preview | manual | 1d | 2017-10-09 | 2017-10-09 |  |
| 122 | 1.3.3.10 | 운행상태 타임라인 모니터링 | manual | 10d | 2017-10-10 | 2017-10-23 |  |
| 123 | 1.3.3.11 | **채널** |  | 2d | 2017-10-24 | 2017-10-25 | 0d |
| 124 | 1.3.3.11.1 | 채널 관리 | manual | 1d | 2017-10-24 | 2017-10-24 |  |
| 125 | 1.3.3.11.2 | 운행 중 채널 검사 | manual | 1d | 2017-10-25 | 2017-10-25 |  |
| 126 | 1.3.3.12 | **환경설정** |  | 12d | 2017-11-01 | 2017-11-16 | 0d |
| 127 | 1.3.3.12.1 | 이벤트 표시항목 설정 | manual | 1d | 2017-11-01 | 2017-11-01 |  |
| 128 | 1.3.3.12.2 | 글꼴 변경 | manual | 1d | 2017-11-02 | 2017-11-02 |  |
| 129 | 1.3.3.12.3 | **테스트** |  | 10d | 2017-11-03 | 2017-11-16 | 0d |
| 130 | 1.3.3.12.3.1 | 단위 기능 테스트 및 보완 | manual | 10d | 2017-11-03 | 2017-11-16 |  |

| ID | WBS | Task | Type | Duration | Start | Finish | Total slack |
| --- | --- | --- | --- | --- | --- | --- | --- |
| 131 | 1.4 | **통합테스트** |  | 20d | 2017-12-26 | 2018-01-22 | 0d |
| 132 | 1.4.1 | SEC<->DCS 인터페이스 테스트 및 보완 | manual | 10d | 2017-12-26 | 2018-01-08 |  |
| 133 | 1.4.2 | DCS<->PCS 인터페이스 테스트 및 보완 | manual | 10d | 2017-12-26 | 2018-01-08 |  |
| 134 | 1.4.3 | APC 운행 테스트 및 보완 | manual | 10d | 2018-01-09 | 2018-01-22 |  |
